# Conlink项目

Schedule from a web Gantt chart, 2026-04-13 to 2026-09-11.
Saturdays and Sundays are off

## Schedule

| ID | WBS | Task | Type | Duration | Start | Finish | Predecessors | Complete | inPeople | Status |
| --- | --- | --- | --- | --- | --- | --- | --- | --- | --- | --- |
| 2 | 1 | 业务背景及技术了解 |  | 17d | 2026-04-13 | 2026-05-05 |  | 100% | 全员 | done |
| 3 | 2 | **Phase1** |  | 48d | 2026-05-06 | 2026-07-10 |  | 100% | 苏岩/晓雨/都超 |  |
| 4 | 2.1 | 产品设计-1 |  | 13d | 2026-05-06 | 2026-05-22 |  | 100% | 苏岩 | done |
| 5 | 2.2 | 技术设计-1 |  | 13d | 2026-05-06 | 2026-05-22 |  | 100% | 晓雨/都超 | done |
| 6 | 2.3 | 方案评审-1 | fixed start | 2d | 2026-05-25 | 2026-05-26 | 4 | 100% |  | done |
| 7 | 2.4 | 开发任务分解-1 |  | 3d | 2026-05-27 | 2026-05-29 | 6 | 100% | 晓雨/都超 | done |
| 8 | 2.5 | 功能开发-1 | fixed end | 30d | 2026-06-01 | 2026-07-10 | 7 | 100% | 晓雨/都超 | done |
| 9 | 2.6 | 测试用例设计-1 |  | 10d | 2026-05-27 | 2026-06-09 | 6 | 100% | 晓暖 | done |
| 10 | 3 | **Phase2** |  | 49d | 2026-05-25 | 2026-07-30 |  | 81% |  |  |
| 11 | 3.1 | 产品设计-2 |  | 10d | 2026-05-25 | 2026-06-05 |  | 100% |  | done |
| 12 | 3.2 | 技术设计-2 |  | 10d | 2026-05-25 | 2026-06-05 |  | 100% |  | done |
| 13 | 3.3 | 方案评审-2 | fixed start | 2d | 2026-06-08 | 2026-06-09 | 11 | 100% |  | done |
| 14 | 3.4 | 开发任务分解-2 |  | 3d | 2026-06-10 | 2026-06-12 | 13 | 100% | 都超/晓雨 | done |
| 15 | 3.5 | 功能开发-2 | fixed end | 34d | 2026-06-15 | 2026-07-30 | 14 | 65% |  |  |
| 16 | 3.6 | 测试用例设计-2 |  | 8d | 2026-06-10 | 2026-06-19 | 13 | 90% | 晓暖 | done |
| 17 | 4 | 修复问题&优化 |  | 34d | 2026-07-13 | 2026-08-27 |  | 10% | 都超/晓雨 |  |
| 18 | 5 | 测试 |  | 25d | 2026-07-13 | 2026-08-14 |  | 15% | 晓暖 |  |
| 19 | 6 | UAT | fixed end | 10d | 2026-08-17 | 2026-08-28 | 18 |  |  | waiting |
| 20 | 7 | 产品手册编写&培训 |  | 15d | 2026-08-17 | 2026-09-04 | 18 |  | 苏岩 | waiting |
| 21 | 8 | 部署上线 | fixed end | 5d | 2026-08-31 | 2026-09-04 | 19 |  | 都超/晓雨 | waiting |
| 22 | 9 | Infantcare |  | 5d | 2026-09-07 | 2026-09-11 | 21 |  | 1年有限质保 | waiting |

Notes:
- 3: 阶段一聚焦业务核心功能
- 4: 梳理BRD输出PRD
- 5: 输出技术详细设计方案
- 7: 输出开发WBS
- 10: 阶段二聚焦辅助功能
- 14: 输出开发WBS
